# Smart_Pantry - Atualizado

Schedule from MS Project, 2024-08-01 to 2025-03-03, costs in R$, A marks actual dates.

## Calendars

- Padrão: Mon-Fri 09:00-12:00, 13:00-18:00; Sat-Sun off.

## Resources

| Resource | Rate |
| --- | --- |
| Desenvolvedor Full Stack | 40.5 |
| Desenvolvedor de Hardware | 41.6 |
| Analista de Requisitos | 26.32 |
| Testador de Sistemas | 20.5 |
| Gerente de Projetos | 80 |
| Desenvolvedor Lider | 64.5 |
| Analista de Marketing | 22.58 |

## Schedule

| ID | WBS | Task | Type | Duration | Start | Finish | Predecessors | Complete | Remaining | Baseline start | Baseline finish | Baseline duration | Total slack | Resources | Work | Actual work | Cost | Baseline cost | Actual cost |
| --- | --- | --- | --- | --- | --- | --- | --- | --- | --- | --- | --- | --- | --- | --- | --- | --- | --- | --- | --- |
| 1 | 1 | **Planejamento** |  | 3d | 2024-08-01 A | 2024-08-05 |  | 67% | 1d | 2024-08-01 | 2024-08-05 | 3d | 0d |  | 64h | 24h | 2,457.68 | 2,457.68 | 786.32 |
| 2 | 1.1 | Reunião de definição de escopo do projeto | manual | 2h | 2024-08-01 A | 2024-08-01 |  | 20% | 1.6h | 2024-08-01 | 2024-08-01 | 2h |  | Analista de Requisitos; Desenvolvedor Full Stack; Desenvolvedor de Hardware; Gerente de Projetos; Testador de Sistemas | 10h | 2h | 417.84 | 417.84 | 83.57 |
| 3 | 1.2 | Alocação de recursos humanos | manual | 6h | 2024-08-01 A | 2024-08-01 A | 2 | 100% |  | 2024-08-01 | 2024-08-01 | 6h |  | Analista de Requisitos | 6h | 6h | 157.92 | 157.92 | 157.92 |
| 4 | 1.3 | Compra de materiais | manual | 6h | 2024-08-02 A | 2024-08-02 A | 2 | 100% |  | 2024-08-02 | 2024-08-02 | 6h |  | Analista de Requisitos | 6h | 6h | 157.92 | 157.92 | 157.92 |
| 5 | 1.4 | Contato com fornecedores | manual | 2h | 2024-08-02 A | 2024-08-02 A | 2 | 100% |  | 2024-08-02 | 2024-08-02 | 2h |  | Analista de Requisitos | 2h | 2h | 52.64 | 52.64 | 52.64 |
| 6 | 1.5 | Reunião de alinhamento com equipe e cliente | manual | 1d | 2024-08-05 A | 2024-08-05 |  | 20% | 0.8d | 2024-08-05 | 2024-08-05 | 1d |  | Analista de Requisitos; Desenvolvedor Full Stack; Desenvolvedor de Hardware; Gerente de Projetos; Testador de Sistemas | 40h | 8h | 1,671.36 | 1,671.36 | 334.27 |
| 7 | 2 | **Software** |  | 19d | 2024-08-06 A | 2024-08-30 |  | 73% | 5.17d | 2024-08-06 | 2024-08-30 | 19d | 0d |  | 232h | 168h | 11,393.5 | 11,393.5 | 8,218.75 |
| 8 | 2.1 | Design da arquitetura de software | manual | 5h | 2024-08-06 A | 2024-08-06 | 6 | 50% | 2.5h | 2024-08-06 | 2024-08-06 | 5h |  | Desenvolvedor Full Stack; Gerente de Projetos | 10h | 5h | 602.5 | 602.5 | 301.25 |
| 9 | 2.2 | Design do banco de dados | manual | 3h | 2024-08-06 A | 2024-08-06 | 6 | 50% | 1.5h | 2024-08-06 | 2024-08-06 | 3h |  | Desenvolvedor Full Stack; Desenvolvedor Lider | 6h | 3h | 315 | 315 | 157.5 |
| 10 | 2.3 | Design de interface de usuário e user experience | manual | 4d | 2024-08-07 A | 2024-08-12 | 8, 9 | 83% | 0.67d | 2024-08-07 | 2024-08-12 | 4d |  | Desenvolvedor Full Stack; Desenvolvedor Lider [50%] | 48h | 40h | 2,328 | 2,328 | 1,940 |
| 11 | 2.4 | Desenvolvimento de firmware | manual | 4d | 2024-08-13 A | 2024-08-16 | 10 | 83% | 0.67d | 2024-08-13 | 2024-08-16 | 4d |  | Desenvolvedor Full Stack; Desenvolvedor Lider [50%] | 48h | 40h | 2,328 | 2,328 | 1,940 |
| 12 | 2.5 | Codificação e implementação das funcionalidades | manual | 10d | 2024-08-19 A | 2024-08-30 | 11 | 67% | 3.33d | 2024-08-19 | 2024-08-30 | 10d |  | Desenvolvedor Full Stack; Desenvolvedor Lider [50%] | 120h | 80h | 5,820 | 5,820 | 3,880 |
| 13 | 3 | **Hardware** |  | 29d | 2024-08-06 A | 2024-09-13 |  | 59% | 11.83d | 2024-08-06 | 2024-09-13 | 29d | 0d |  | 408h | 232h | 21,623.2 | 21,623.2 | 12,067.07 |
| 14 | 3.1 | Design da arquitetura de Hardware | manual | 2d | 2024-08-06 A | 2024-08-07 | 6 | 67% | 0.67d | 2024-08-06 | 2024-08-07 | 2d |  | Desenvolvedor Lider [50%]; Desenvolvedor de Hardware | 24h | 16h | 1,181.6 | 1,181.6 | 787.73 |
| 15 | 3.2 | Design dos circuitos elétricos | manual | 2d | 2024-08-08 A | 2024-08-09 | 14 | 67% | 0.67d | 2024-08-08 | 2024-08-09 | 2d |  | Desenvolvedor Lider [50%]; Desenvolvedor de Hardware | 24h | 16h | 1,181.6 | 1,181.6 | 787.73 |
| 16 | 3.3 | Projeto de estrutura física | manual | 5d | 2024-08-12 A | 2024-08-16 | 15 | 40% | 3d | 2024-08-12 | 2024-08-16 | 5d |  | Desenvolvedor Lider [50%]; Desenvolvedor de Hardware; Gerente de Projetos | 100h | 40h | 6,154 | 6,154 | 2,461.6 |
| 17 | 3.4 | Seleção de componentes | manual | 5d | 2024-08-19 A | 2024-08-23 | 16 | 67% | 1.67d | 2024-08-19 | 2024-08-23 | 5d |  | Desenvolvedor de Hardware; Desenvolvedor Lider [50%] | 60h | 40h | 2,954 | 2,954 | 1,969.33 |
| 18 | 3.5 | Construção de protótipos | manual | 10d | 2024-08-26 A | 2024-09-06 | 17 | 67% | 3.33d | 2024-08-26 | 2024-09-06 | 10d |  | Desenvolvedor de Hardware; Desenvolvedor Lider [50%] | 120h | 80h | 5,908 | 5,908 | 3,938.67 |
| 19 | 3.6 | Aplicação de Firmware | manual | 5d | 2024-09-09 A | 2024-09-13 | 18 | 50% | 2.5d | 2024-09-09 | 2024-09-13 | 5d |  | Desenvolvedor de Hardware; Desenvolvedor Lider | 80h | 40h | 4,244 | 4,244 | 2,122 |
| 20 | 4 | **Integração** |  | 70d | 2024-09-16 | 2024-12-20 |  |  |  | 2024-09-16 | 2024-12-20 | 70d | 0d |  | 1760h |  | 88,496 | 88,496 |  |
| 21 | 4.1 | Design de arquitetura de integração | manual | 10d | 2024-09-16 | 2024-09-27 | 7, 13 |  |  | 2024-09-16 | 2024-09-27 | 10d |  | Desenvolvedor de Hardware; Desenvolvedor Full Stack; Desenvolvedor Lider; Gerente de Projetos | 320h |  | 18,128 | 18,128 |  |
| 22 | 4.2 | Configuração do ambiente de integração | manual | 5d | 2024-09-30 | 2024-10-04 | 21 |  |  | 2024-09-30 | 2024-10-04 | 5d |  | Desenvolvedor de Hardware; Desenvolvedor Full Stack; Desenvolvedor Lider | 120h |  | 5,864 | 5,864 |  |
| 23 | 4.3 | Desenvolvimento de componentes de integração software-hardware | manual | 10d | 2024-10-07 | 2024-10-18 | 21, 22 |  |  | 2024-10-07 | 2024-10-18 | 10d |  | Desenvolvedor de Hardware; Desenvolvedor Full Stack; Desenvolvedor Lider | 240h |  | 11,728 | 11,728 |  |
| 24 | 4.4 | Integração de software e sistemas | manual | 15d | 2024-10-21 | 2024-11-08 | 23 |  |  | 2024-10-21 | 2024-11-08 | 15d |  | Desenvolvedor de Hardware; Desenvolvedor Full Stack; Desenvolvedor Lider | 360h |  | 17,592 | 17,592 |  |
| 25 | 4.5 | Implementação de APIs e protocolo de comunicação software-hardware | manual | 10d | 2024-11-11 | 2024-11-22 | 23, 24 |  |  | 2024-11-11 | 2024-11-22 | 10d |  | Desenvolvedor de Hardware; Desenvolvedor Full Stack; Desenvolvedor Lider | 240h |  | 11,728 | 11,728 |  |
| 26 | 4.6 | Integração de software e hardware | manual | 20d | 2024-11-25 | 2024-12-20 | 21, 22, 23, 24, 25 |  |  | 2024-11-25 | 2024-12-20 | 20d |  | Desenvolvedor de Hardware; Desenvolvedor Full Stack; Desenvolvedor Lider | 480h |  | 23,456 | 23,456 |  |

| ID | WBS | Task | Type | Duration | Start | Finish | Predecessors | Baseline start | Baseline finish | Baseline duration | Total slack | Resources | Work | Cost | Baseline cost |
| --- | --- | --- | --- | --- | --- | --- | --- | --- | --- | --- | --- | --- | --- | --- | --- |
| 27 | 5 | **Testes** |  | 35d | 2024-12-23 | 2025-02-07 |  | 2024-12-23 | 2025-02-07 | 35d | 0d |  | 800h | 34,220 | 34,220 |
| 28 | 5.1 | Testes funcionais de software | manual | 5d | 2024-12-23 | 2024-12-27 | 20 | 2024-12-23 | 2024-12-27 | 5d |  | Desenvolvedor Full Stack; Testador de Sistemas [50%] | 60h | 2,030 | 2,030 |
| 29 | 5.2 | Testes funcionais de banco de dados | manual | 5d | 2024-12-23 | 2024-12-27 | 20 | 2024-12-23 | 2024-12-27 | 5d |  | Desenvolvedor Lider; Testador de Sistemas [50%] | 60h | 2,990 | 2,990 |
| 30 | 5.3 | Testes funcionais de hardware | manual | 5d | 2024-12-30 | 2025-01-03 | 29, 28 | 2024-12-30 | 2025-01-03 | 5d |  | Desenvolvedor de Hardware; Testador de Sistemas [50%] | 60h | 2,074 | 2,074 |
| 31 | 5.4 | Testes de usabilidade da interface de usuário | manual | 5d | 2024-12-30 | 2025-01-03 | 29, 28 | 2024-12-30 | 2025-01-03 | 5d |  | Desenvolvedor Full Stack; Testador de Sistemas [50%] | 60h | 2,030 | 2,030 |
| 32 | 5.5 | Testes de integração | manual | 5d | 2025-01-06 | 2025-01-10 | 31, 30 | 2025-01-06 | 2025-01-10 | 5d |  | Desenvolvedor de Hardware; Testador de Sistemas [50%] | 60h | 2,074 | 2,074 |
| 33 | 5.6 | Testes de performance | manual | 5d | 2025-01-06 | 2025-01-10 | 31, 30 | 2025-01-06 | 2025-01-10 | 5d |  | Desenvolvedor Full Stack; Testador de Sistemas [50%] | 60h | 2,030 | 2,030 |
| 34 | 5.7 | Testes de segurança | manual | 5d | 2025-01-13 | 2025-01-17 | 33, 32 | 2025-01-13 | 2025-01-17 | 5d |  | Desenvolvedor Lider; Testador de Sistemas | 80h | 3,400 | 3,400 |
| 35 | 5.8 | Correção de bugs | manual | 15d | 2025-01-20 | 2025-02-07 | 28, 29, 30, 31, 32, 33, 34 | 2025-01-20 | 2025-02-07 | 15d |  | Desenvolvedor de Hardware; Desenvolvedor Full Stack; Desenvolvedor Lider | 360h | 17,592 | 17,592 |
| 36 | 6 | **Lançamento** |  | 21d | 2025-02-03 | 2025-03-03 |  | 2025-02-03 | 2025-03-03 | 21d | 0d |  | 304h | 11,392.8 | 11,392.8 |
| 37 | 6.1 | Marketign pré-lançamento e teasers | manual | 15d | 2025-02-03 | 2025-02-21 |  | 2025-02-03 | 2025-02-21 | 15d |  | Analista de Marketing | 120h | 2,709.6 | 2,709.6 |
| 38 | 6.2 | Demonstrações ao-vivo | manual | 2d | 2025-02-10 | 2025-02-11 | 35 | 2025-02-10 | 2025-02-11 | 2d |  | Gerente de Projetos; Analista de Requisitos | 32h | 1,701.12 | 1,701.12 |
| 39 | 6.3 | Beta testing com usuários chave | manual | 2d | 2025-02-24 | 2025-02-25 | 35, 37, 38 | 2025-02-24 | 2025-02-25 | 2d |  | Analista de Marketing | 16h | 361.28 | 361.28 |
| 40 | 6.4 | Treinamento para instalação e manutenção de hardware | manual | 5d | 2025-02-24 | 2025-02-28 | 37, 39 | 2025-02-24 | 2025-02-28 | 5d |  | Analista de Requisitos; Gerente de Projetos | 80h | 4,252.8 | 4,252.8 |
| 41 | 6.5 | Evento de lançamento | manual | 1d | 2025-03-03 | 2025-03-03 | 1, 7, 13, 20, 27, 37, 38, 39, 40 | 2025-03-03 | 2025-03-03 | 1d |  | Desenvolvedor Full Stack; Desenvolvedor Lider; Desenvolvedor de Hardware; Gerente de Projetos; Testador de Sistemas; Analista de Requisitos; Analista de Marketing | 56h | 2,368 | 2,368 |
